# Metasepi Project

Schedule from Planner, 2014-05-12 to 2015-03-24.

## Calendars

- デフォルト: Mon-Fri 08:00-12:00, 13:00-17:00; Sat-Sun off.

## Schedule

| ID | WBS | Task | Type | Duration | Start | Finish | Predecessors | Constraint | Work |
| --- | --- | --- | --- | --- | --- | --- | --- | --- | --- |
| 1 | 1 | **ATS demo on tiny CPU** |  |  | 2014-05-12 | 2014-05-26 |  |  | 88h |
| 2 | 1.1 | AVR support to ATS |  |  | 2014-05-12 | 2014-05-20 |  |  | 51h |
| 3 | 1.2 | ARM support to ATS |  |  | 2014-05-20 | 2014-05-26 | 2 |  | 37h |
| 4 | 2 | **Translate ATS doc** |  |  | 2014-05-12 | 2014-12-23 |  |  | 1292h |
| 5 | 2.1 | ATS2TUTORIAL |  |  | 2014-05-12 | 2014-05-26 |  |  | 88h |
| 6 | 2.2 | INT2PROGINATS |  |  | 2014-05-27 | 2014-06-20 | 5 |  | 152h |
| 7 | 2.3 | Paper |  |  | 2014-06-23 | 2014-08-12 | 6 |  | 291.5h |
| 8 | 2.4 | BLUISH CODER |  |  | 2014-08-12 | 2014-12-23 | 7 |  | 760.5h |
| 9 | 3 | **Translate Metasepi blog** |  |  | 2014-05-27 | 2014-09-03 | 5 |  | 568.75h |
| 10 | 3.1 | Translate past entries |  |  | 2014-05-27 | 2014-09-03 |  |  | 568.75h |
| 11 | 4 | **ATS Ethernet driver** |  |  | 2014-05-27 | 2014-08-22 | 5 |  | 512h |
| 12 | 4.1 | Support mbed |  |  | 2014-05-27 | 2014-08-22 |  |  | 512h |
| 13 | 5 | OSC@Nagoya | milestone | 0d | 2014-07-04 | 2014-07-04 |  | must start on 2014-07-04 |  |
| 14 | 6 | OSC@Kansai | milestone | 0d | 2014-08-01 | 2014-08-01 |  | must start on 2014-08-01 |  |
| 15 | 7 | Haskell Symposium | milestone | 0d | 2014-09-04 | 2014-09-04 | 9 | must start on 2014-09-04 |  |
| 16 | 8 | **Web framework** |  |  | 2014-08-25 | 2014-11-14 | 11 |  | 480h |
| 17 | 8.1 | On POSIX |  |  | 2014-08-25 | 2014-09-19 |  |  | 160h |
| 18 | 8.2 | On mbed |  |  | 2014-09-22 | 2014-10-17 | 17 |  | 160h |
| 19 | 8.3 | Wiki application |  |  | 2014-10-20 | 2014-11-14 | 18 |  | 160h |
| 20 | 9 | OSC@Tokyo | milestone | 0d | 2014-10-20 | 2014-10-18 | 18 | must start on 2014-10-18 |  |
| 21 | 10 | **ATS snatches NetBSD** |  |  | 2014-11-17 | 2014-12-26 | 16 |  | 240h |
| 22 | 10.1 | Setup raspberrypi |  |  | 2014-11-17 | 2014-12-05 |  |  | 120h |
| 23 | 10.2 | Choose snatch target |  |  | 2014-12-08 | 2014-12-19 | 22 |  | 80h |
| 24 | 10.3 | Setup ATS config |  |  | 2014-12-22 | 2014-12-26 | 23 |  | 40h |

| ID | WBS | Task | Start | Finish | Predecessors | Work |
| --- | --- | --- | --- | --- | --- | --- |
| 25 | 11 | **ATS package manager** | 2014-12-29 | 2015-01-27 | 21 | 176h |
| 26 | 11.1 | Understand opam design | 2014-12-29 | 2015-01-16 |  | 120h |
| 27 | 11.2 | Get design for ATS | 2015-01-19 | 2015-01-27 | 26 | 56h |
| 28 | 12 | Parsec on ATS | 2015-01-28 | 2015-02-24 | 25 | 160h |
| 29 | 13 | ATS Windows installer | 2015-02-25 | 2015-03-24 | 28 | 160h |
